# QuanTri

Schedule from MS Project, 2024-02-21 to 2024-04-24, costs in ₫, A marks actual dates.

## Calendars

- Standard: Mon-Fri 08:00-12:00, 13:00-17:00; Sat-Sun off. Exceptions (off unless hours are given): 2024-04-18 (Giỗ Tỗ Hùng Vương).

## Resources

| Resource | Group | Rate |
| --- | --- | --- |
| Nguyễn Ngọc Cảnh Phong - Quản Lý | Quản Lý | 100000 |
| Trần Văn Huy - Lập Trình Viên 1 | Lập Trình | 40000 |
| Hoàng Thanh Tùng- Kiểm Thử Viên 1 | Kiểm Thử | 50000 |
| Trần Văn Huy - Kĩ Thuật Viên | Kĩ Thuật | 50000 |
| Đỗ Thị Diệu Ái - Phân Tích Viên 2 | Phân Tích | 55000 |
| Hoàng Thị Kiều Oanh - Thiết Kế Giao Diện 2 | Giao Diện | 40000 |
| Nguyễn Ngọc Cảnh Phong - Lập Trình Viên 2 | Lập Trình | 40000 |
| Hoàng Thanh Tùng - Phân Tích Viên 1 | Phân Tích | 55000 |
| Lê Thị Bảo Trâm - Thiết Kế Giao Diện 1 | Giao Diện | 40000 |
| Nguyễn Thị Minh Thư- Kiểm Thử Viên 2 | Kiểm Thử | 40000 |
| Nguyễn Ngọc Cảnh Phong - Thiết Kế Dữ Liệu 1 | Dữ Liệu | 70000 |
| Đỗ Thị Diệu Ái - Thiết Kế Dữ Liệu 2 | Dữ Liệu | 70000 |
| Hoàng Thị Kiều Oanh - Phân Tích Viên 3 | Phân Tích | 55000 |
| Nguyễn Thị Minh Thư - Thiết Kế Dữ Liệu 3 | Dữ Liệu | 70000 |
| Đỗ THi |  |  |

## Schedule

| ID | WBS | Task | Duration | Start | Finish | Predecessors | Complete | Remaining | Total slack | Free slack | Constraint | Resources | Work | Actual work | Cost | Actual cost |
| --- | --- | --- | --- | --- | --- | --- | --- | --- | --- | --- | --- | --- | --- | --- | --- | --- |
| 1 | 1 | **XÂY DỰNG HỆ THỐNG QUẢN LÝ KẾT NỐI VÀ CUNG CẤP GIA SƯ TP-HUẾ** | 45d | 2024-02-21 A | 2024-04-24 |  | 4% | 43.3d | 0d |  |  |  | 757.5h | 8h | 36,582,500 | 800,000 |
| 2 | 1.1 | Bản kế hoạch dự án | 1d | 2024-02-21 A | 2024-02-21 A |  | 100% |  |  |  | finish no earlier than 2024-02-21 | Nguyễn Ngọc Cảnh Phong - Quản Lý | 8h | 8h | 800,000 | 800,000 |
| 3 | 1.2 | Thời gian phê duyệt dự án | 1d | 2024-02-22 A | 2024-02-22 A | 2 | 100% |  |  |  | start no earlier than 2024-02-22 |  |  |  |  |  |
| 4 | 1.3 | **Phân Tích** | 15d | 2024-02-23 | 2024-03-14 |  |  |  | -8d | 0d |  |  | 261.5h |  | 14,742,500 |  |
| 5 | 1.3.1 | **Thu Thập, Phân Tích Nhu Cầu Khách Hàng** | 2d | 2024-02-23 | 2024-02-26 |  |  |  | -8d | 0d |  |  | 21.5h |  | 1,182,500 |  |
| 6 | 1.3.1.1 | **Trao đổi, thu nhập yêu cầu khách hàng** | 1d | 2024-02-23 | 2024-02-23 |  |  |  | -8d | 0d |  |  | 8h |  | 440,000 |  |
| 7 | 1.3.1.1.1 | Gặp mặt, trao đổi với khách hàng | 0.5d | 2024-02-23 | 2024-02-23 | 3 |  |  | -8d | 0d |  | Hoàng Thị Kiều Oanh - Phân Tích Viên 3 | 4h |  | 220,000 |  |
| 8 | 1.3.1.1.2 | Thu nhập, ghi chú các thông tin, nhu cầu của khách hàng | 0.5d | 2024-02-23 | 2024-02-23 | 7 |  |  | -8d | 0d | start no earlier than 2024-02-21 | Hoàng Thị Kiều Oanh - Phân Tích Viên 3 | 4h |  | 220,000 |  |
| 9 | 1.3.1.2 | **Phân tích nhu cầu khách hàng** | 1d | 2024-02-26 | 2024-02-26 |  |  |  | -8d | 0d |  |  | 13.5h |  | 742,500 |  |
| 10 | 1.3.1.2.1 | Chọn lọc, phân loại các yêu cầu của khách hàng | 3h | 2024-02-26 | 2024-02-26 | 8 |  |  | -8d | 0d |  | Hoàng Thị Kiều Oanh - Phân Tích Viên 3; Đỗ Thị Diệu Ái - Phân Tích Viên 2 | 6h |  | 330,000 |  |
| 11 | 1.3.1.2.2 | Xác định các yêu cầu chức năng và phi chức năng | 2.5h | 2024-02-26 | 2024-02-26 | 10 |  |  | -8d | 0d |  | Đỗ Thị Diệu Ái - Phân Tích Viên 2; Hoàng Thị Kiều Oanh - Phân Tích Viên 3 | 5h |  | 275,000 |  |
| 12 | 1.3.1.2.3 | Tổng kết những thông tin đã thu nhập và phân tích | 1.5h | 2024-02-26 | 2024-02-26 | 11 |  |  | -8d | 0d |  | Đỗ Thị Diệu Ái - Phân Tích Viên 2 | 1.5h |  | 82,500 |  |
| 13 | 1.3.1.2.4 | Xác định những yêu cầu đáp ứng được và không đáp ứng được | 1h | 2024-02-26 | 2024-02-26 | 12 |  |  | -8d | 0d |  | Hoàng Thị Kiều Oanh - Phân Tích Viên 3 | 1h |  | 55,000 |  |
| 14 | 1.3.2 | **Lên ý tưởng, Phân tích cấu trúc phần mềm, phi chức năng, thông số kỹ thuật, giao diện, xác định rủi ro, ước lượng công việc** | 10d | 2024-02-27 | 2024-03-11 |  |  |  | -8d | 0d |  |  | 168h |  | 9,240,000 |  |
| 15 | 1.3.2.1 | **Tổ chức và lên ý tưởng** | 1d | 2024-02-27 | 2024-02-27 |  |  |  | -8d | 0d |  |  | 24h |  | 1,320,000 |  |
| 16 | 1.3.2.1.1 | Tổ chức họp đội ngũ trong việc lên ý tưởng | 0.4d | 2024-02-27 | 2024-02-27 | 13 |  |  | -8d | 0d |  | Đỗ Thị Diệu Ái - Phân Tích Viên 2; Hoàng Thanh Tùng - Phân Tích Viên 1; Hoàng Thị Kiều Oanh - Phân Tích Viên 3 | 9.6h |  | 528,000 |  |
| 17 | 1.3.2.1.2 | Xây dựng mô phỏng dự án | 0.6d | 2024-02-27 | 2024-02-27 | 16 |  |  | -8d | 0d |  | Đỗ Thị Diệu Ái - Phân Tích Viên 2; Hoàng Thanh Tùng - Phân Tích Viên 1; Hoàng Thị Kiều Oanh - Phân Tích Viên 3 | 14.4h |  | 792,000 |  |
| 18 | 1.3.2.2 | **Phân tích cấu trúc phần mềm** | 2d | 2024-02-28 | 2024-02-29 |  |  |  | -8d | 0d |  |  | 32h |  | 1,760,000 |  |
| 19 | 1.3.2.2.1 | Xác định và mô tả các chức năng cần thiết của hệ thống | 1d | 2024-02-28 | 2024-02-28 | 17 |  |  | -8d | 0d |  | Đỗ Thị Diệu Ái - Phân Tích Viên 2; Hoàng Thị Kiều Oanh - Phân Tích Viên 3 | 16h |  | 880,000 |  |
| 20 | 1.3.2.2.2 | Tạo biểu đồ use case và mô tả chi tiết các yêu cầu chức năng | 1d | 2024-02-29 | 2024-02-29 | 19 |  |  | -8d | 0d |  | Đỗ Thị Diệu Ái - Phân Tích Viên 2; Hoàng Thị Kiều Oanh - Phân Tích Viên 3 | 16h |  | 880,000 |  |
| 21 | 1.3.2.3 | **Phân tích phi chức năng** | 1d | 2024-03-01 | 2024-03-01 |  |  |  | -8d | 0d |  |  | 8h |  | 440,000 |  |
| 22 | 1.3.2.3.1 | Xác định các yêu cầu, như tiêu chuẩn về hiệu suất, bảo mật và giao diện người dùng | 1d | 2024-03-01 | 2024-03-01 | 20 |  |  | -8d | 0d |  | Hoàng Thanh Tùng - Phân Tích Viên 1 | 8h |  | 440,000 |  |
| 23 | 1.3.2.4 | **Phân tích thông số kỹ thuật** | 1d | 2024-03-04 | 2024-03-04 |  |  |  | -8d | 0d |  |  | 16h |  | 880,000 |  |
| 24 | 1.3.2.4.1 | Xác định các yêu cầu kỹ thuật của hệ thống | 0.3d | 2024-03-04 | 2024-03-04 | 22 |  |  | -8d | 0d |  | Đỗ Thị Diệu Ái - Phân Tích Viên 2; Hoàng Thanh Tùng - Phân Tích Viên 1 | 4.8h |  | 264,000 |  |
| 25 | 1.3.2.4.2 | Phân tích các thông số kỹ thuật về hiệu suất, dung lượng và độ tin cậy | 0.7d | 2024-03-04 | 2024-03-04 | 24 |  |  | -8d | 0d |  | Đỗ Thị Diệu Ái - Phân Tích Viên 2; Hoàng Thanh Tùng - Phân Tích Viên 1 | 11.2h |  | 616,000 |  |

| ID | WBS | Task | Type | Duration | Start | Finish | Predecessors | Total slack | Free slack | Resources | Work | Cost |
| --- | --- | --- | --- | --- | --- | --- | --- | --- | --- | --- | --- | --- |
| 26 | 1.3.2.5 | **Phân tích giao diện** |  | 1d | 2024-03-05 | 2024-03-05 |  | -8d | 0d |  | 8h | 440,000 |
| 27 | 1.3.2.5.1 | Lên ý tưởng về giao diện theo yêu cầu khách |  | 1d | 2024-03-05 | 2024-03-05 | 25 | -8d | 0d | Hoàng Thị Kiều Oanh - Phân Tích Viên 3 | 8h | 440,000 |
| 28 | 1.3.2.6 | **Xác định rủi ro** |  | 2d | 2024-03-06 | 2024-03-07 |  | -8d | 0d |  | 48h | 2,640,000 |
| 29 | 1.3.2.6.1 | Phân tích các rủi ro tiềm ẩn trong dự án và đề xuất các biện pháp phòng ngừa |  | 1.4d | 2024-03-06 | 2024-03-07 | 27 | -8d | 0d | Đỗ Thị Diệu Ái - Phân Tích Viên 2; Hoàng Thanh Tùng - Phân Tích Viên 1; Hoàng Thị Kiều Oanh - Phân Tích Viên 3 | 33.6h | 1,848,000 |
| 30 | 1.3.2.6.2 | Xác định các vấn đề có thể phát sinh và các giải pháp giảm thiểu tác động của chúng |  | 0.6d | 2024-03-07 | 2024-03-07 | 29 | -8d | 0d | Đỗ Thị Diệu Ái - Phân Tích Viên 2; Hoàng Thanh Tùng - Phân Tích Viên 1; Hoàng Thị Kiều Oanh - Phân Tích Viên 3 | 14.4h | 792,000 |
| 31 | 1.3.2.7 | **Lập kế hoạch và ước lượng công việc** |  | 2d | 2024-03-08 | 2024-03-11 |  | -8d | 0d |  | 32h | 1,760,000 |
| 32 | 1.3.2.7.1 | Phân tích công việc cần thực hiện và ước lượng thời gian và nguồn lực cần thiết |  | 1.5d | 2024-03-08 | 2024-03-11 | 30 | -8d | 0d | Hoàng Thanh Tùng - Phân Tích Viên 1; Hoàng Thị Kiều Oanh - Phân Tích Viên 3 | 24h | 1,320,000 |
| 33 | 1.3.2.7.2 | Lập bản phân rã công việc |  | 0.5d | 2024-03-11 | 2024-03-11 | 32 | -8d | 0d | Hoàng Thanh Tùng - Phân Tích Viên 1; Hoàng Thị Kiều Oanh - Phân Tích Viên 3 | 8h | 440,000 |
| 34 | 1.3.3 | **Lập Bảng Báo Cáo, Phản Hồi Khách Hàng** |  | 2d | 2024-03-12 | 2024-03-13 | 14 | -8d | 0d | Hoàng Thanh Tùng - Phân Tích Viên 1; Đỗ Thị Diệu Ái - Phân Tích Viên 2 | 64h | 3,520,000 |
| 35 | 1.3.3.1 | **Lập bảng báo cáo, Phản Hồi Khách Hàng** |  | 2d | 2024-03-12 | 2024-03-13 |  | -8d | 0d |  | 32h | 1,760,000 |
| 36 | 1.3.3.1.1 | Tạo tài liệu báo cáo về quá trình, các kết quả đạt được, và kế hoạch cho giai đoạn tiếp theo của dự án |  | 1d | 2024-03-12 | 2024-03-12 | 33 | -8d | 0d | Đỗ Thị Diệu Ái - Phân Tích Viên 2; Hoàng Thanh Tùng - Phân Tích Viên 1; Hoàng Thị Kiều Oanh - Phân Tích Viên 3 | 24h | 1,320,000 |
| 37 | 1.3.3.1.2 | Liên hệ với khách hàng để trao đổi và xác nhận rằng phần mềm đã được thiết kế đáp ứng được mong muốn của khách hàng |  | 1d | 2024-03-13 | 2024-03-13 | 36 | -8d | 0d | Hoàng Thị Kiều Oanh - Phân Tích Viên 3 | 8h | 440,000 |
| 38 | 1.3.4 | Chờ Phê Duyệt Để Tiến Hành |  | 1d | 2024-03-14 | 2024-03-14 | 34 | -8d | 0d | Nguyễn Ngọc Cảnh Phong - Quản Lý | 8h | 800,000 |
| 39 | 1.3.5 | Hoàn Thành Phân Tích | milestone | 0d | 2024-03-14 | 2024-03-14 | 38 | -8d | 0d | Đỗ Thị Diệu Ái - Phân Tích Viên 2 |  |  |
| 40 | 1.4 | **Thiết kế** |  | 8d | 2024-03-15 | 2024-03-26 |  | -8d | 0d |  | 88h | 4,000,000 |
| 41 | 1.4.1 | Thiết Kế Cấu Trúc Phần Mềm |  | 2d | 2024-03-15 | 2024-03-18 | 39 | -8d | 0d | Lê Thị Bảo Trâm - Thiết Kế Giao Diện 1 | 16h | 640,000 |
| 42 | 1.4.2 | Thiết Kế Giao Diện |  | 2d | 2024-03-19 | 2024-03-20 | 41 | -8d | 0d | Hoàng Thị Kiều Oanh - Thiết Kế Giao Diện 2 | 16h | 640,000 |
| 43 | 1.4.3 | Thiết Kế Cơ Sở Dữ Liệu |  | 2d | 2024-03-21 | 2024-03-22 | 42 | -8d | 0d | Lê Thị Bảo Trâm - Thiết Kế Giao Diện 1; Hoàng Thị Kiều Oanh - Thiết Kế Giao Diện 2 | 32h | 1,280,000 |
| 44 | 1.4.4 | Thiết Kế Thành Phần Hệ Thống |  | 1d | 2024-03-25 | 2024-03-25 | 43 | -8d | 0d | Lê Thị Bảo Trâm - Thiết Kế Giao Diện 1; Hoàng Thị Kiều Oanh - Thiết Kế Giao Diện 2 | 16h | 640,000 |
| 45 | 1.4.5 | Chờ Phê Duyệt Để Tiến Hành |  | 1d | 2024-03-26 | 2024-03-26 | 44 | -8d | 0d | Nguyễn Ngọc Cảnh Phong - Quản Lý | 8h | 800,000 |
| 46 | 1.4.6 | Hoàn Thành Thiết kế | milestone, manual | 0d | 2024-03-15 | 2024-03-15 | 45 |  |  |  |  |  |
| 47 | 1.5 | **Triển Khai** |  | 20d | 2024-03-15 | 2024-04-11 |  | 0d |  |  | 320h | 12,800,000 |
| 48 | 1.5.1 | Triển Khai Logic Hệ Thông |  | 5d | 2024-03-15 | 2024-03-21 | 46 | 0d |  | Trần Văn Huy - Lập Trình Viên 1; Nguyễn Ngọc Cảnh Phong - Lập Trình Viên 2 | 80h | 3,200,000 |
| 49 | 1.5.2 | Phát Triển Các Thành Phần CSDL |  | 5d | 2024-03-22 | 2024-03-28 | 48 | 0d |  | Trần Văn Huy - Lập Trình Viên 1; Nguyễn Ngọc Cảnh Phong - Lập Trình Viên 2 | 80h | 3,200,000 |
| 50 | 1.5.3 | Lập Trình Hệ Thống |  | 5d | 2024-03-29 | 2024-04-04 | 49 | 0d |  | Trần Văn Huy - Lập Trình Viên 1; Nguyễn Ngọc Cảnh Phong - Lập Trình Viên 2 | 80h | 3,200,000 |
| 51 | 1.5.4 | Đánh Giá Và Tối Ưu Mã Nguồn |  | 5d | 2024-04-05 | 2024-04-11 | 50 | 0d |  | Trần Văn Huy - Lập Trình Viên 1; Nguyễn Ngọc Cảnh Phong - Lập Trình Viên 2 | 80h | 3,200,000 |
| 52 | 1.5.5 | Hoàn Thành Lập Trình | milestone | 0d | 2024-04-11 | 2024-04-11 | 51 | 0d |  |  |  |  |

| ID | WBS | Task | Type | Duration | Start | Finish | Predecessors | Total slack | Resources | Work | Cost |
| --- | --- | --- | --- | --- | --- | --- | --- | --- | --- | --- | --- |
| 53 | 1.6 | **Kiểm Thử** |  | 6d | 2024-04-12 | 2024-04-22 |  | 0d |  | 64h | 3,440,000 |
| 54 | 1.6.1 | Lập Bảng Kế Hoạch Kiểm Thử |  | 1d | 2024-04-12 | 2024-04-12 | 52 | 0d | Hoàng Thanh Tùng- Kiểm Thử Viên 1 | 8h | 400,000 |
| 55 | 1.6.2 | Viết Và Tiến Hành Các Ca Kiểm Thử |  | 1d | 2024-04-15 | 2024-04-15 | 54 | 0d | Hoàng Thanh Tùng- Kiểm Thử Viên 1 | 8h | 400,000 |
| 56 | 1.6.3 | Kiểm Thử Toàn Hệ Thống |  | 1d | 2024-04-16 | 2024-04-16 | 55 | 0d | Hoàng Thanh Tùng- Kiểm Thử Viên 1 | 8h | 400,000 |
| 57 | 1.6.4 | Xác Định Và Sữa Lỗi |  | 2d | 2024-04-17 | 2024-04-19 | 56 | 0d | Hoàng Thanh Tùng- Kiểm Thử Viên 1; Trần Văn Huy - Lập Trình Viên 1 | 32h | 1,440,000 |
| 58 | 1.6.5 | Đánh Giá Cuối Cùng |  | 1d | 2024-04-22 | 2024-04-22 | 57 | 0d | Nguyễn Ngọc Cảnh Phong - Quản Lý | 8h | 800,000 |
| 59 | 1.6.6 | Hoàn Thành Kiểm Thử | milestone | 0d | 2024-04-22 | 2024-04-22 | 58 | 0d |  |  |  |
| 60 | 1.7 | **Bàn Giao** |  | 2d | 2024-04-23 | 2024-04-24 |  | 0d |  | 16h | 800,000 |
| 61 | 1.7.1 | Cài Đặt Phần Mềm |  | 1d | 2024-04-23 | 2024-04-23 | 59 | 0d | Trần Văn Huy - Kĩ Thuật Viên | 8h | 400,000 |
| 62 | 1.7.2 | Hướng Dẫn Phầm Mềm |  | 1d | 2024-04-24 | 2024-04-24 | 61 | 0d | Trần Văn Huy - Kĩ Thuật Viên | 8h | 400,000 |
